# Remodelación Casa Mendoza 1.1

Schedule from MS Project XML, 2026-11-16 to 2026-12-31, costs in $.
Cronograma de Prueba MS Project Desktop 2021 - JGM ConTech
JGM ConTech

## Calendars

- Estándar: Mon-Fri 08:00-12:00, 13:00-17:00; Sat-Sun off.

## Schedule

| ID | WBS | Task | Type | Duration | Start | Finish | Predecessors | Cost |
| --- | --- | --- | --- | --- | --- | --- | --- | --- |
| 1 | 1 | **FASE 1 — CUBIERTA, MAMPOSTERÍA Y PAÑETES** |  | 17d | 2026-11-16 | 2026-12-08 |  | 277,057.45 |
| 2 | 1.1 | Montaje de cubierta en teja ondulada Eternit y caballetes (132.05 m²) |  | 5d | 2026-11-16 | 2026-11-20 |  | 59,422.5 |
| 3 | 1.2 | Muros en mampostería de bloques de concreto No. 12 (227.89 m²) |  | 6d | 2026-11-23 | 2026-11-30 | 2 | 108,247.75 |
| 4 | 1.3 | Pañete y mortero de revoco en muros dos caras (455.78 m²) |  | 6d | 2026-12-01 | 2026-12-08 | 3 | 109,387.2 |
| 5 | 2 | **FASE 2 — PLANTILLAS DE CONCRETO Y ENCHAPES DE PISO** |  | 13d | 2026-12-01 | 2026-12-17 |  | 98,239.6 |
| 6 | 2.1 | Plantilla de concreto e=7cm base y solado de piso (106.24 m²) |  | 4d | 2026-12-01 | 2026-12-04 | 3 | 36,121.6 |
| 7 | 2.2 | Instalación de piso en porcelanato 51x51 cm y enchape (107.10 m²) |  | 7d | 2026-12-09 | 2026-12-17 | 4, 6 | 62,118 |
| 8 | 3 | **FASE 3 — CIELOS RASOS Y AISLAMIENTO FRESCASA ECO** |  | 8d | 2026-12-09 | 2026-12-18 |  | 48,090.75 |
| 9 | 3.1 | Instalación de cielo raso suspendido e=5.3cm (86.65 m²) |  | 5d | 2026-12-09 | 2026-12-15 | 4 | 32,927 |
| 10 | 3.2 | Suministro e instalación aislamiento Frescasa Eco 2-1/2" sobre cielo raso - todas las zonas (86.65 m²) |  | 3d | 2026-12-16 | 2026-12-18 | 9 | 15,163.75 |
| 11 | 4 | **FASE 4 — ESTUCO Y PINTURA EN MUROS** |  | 6d | 2026-12-21 | 2026-12-28 |  | 75,203.7 |
| 12 | 4.1 | Estuco plástico y pintura vinílica en muros (455.78 m²) |  | 6d | 2026-12-21 | 2026-12-28 | 7, 10 | 75,203.7 |
| 13 | 5 | **FASE 5 — CARPINTERÍA METÁLICA Y PUERTAS** |  | 9d | 2026-12-21 | 2026-12-31 |  | 49,700 |
| 14 | 5.1 | Suministro e instalación de ventanería en aluminio y vidrio (8 und) |  | 3d | 2026-12-21 | 2026-12-23 | 10 | 22,400 |
| 15 | 5.2 | Suministro e instalación de puertas interiores y acceso (7 und) |  | 3d | 2026-12-29 | 2026-12-31 | 12 | 27,300 |
| 16 | 6 | **FASE 6 — CIERRE Y ENTREGA DE OBRA** |  | 0d | 2026-12-31 | 2026-12-31 |  |  |
| 17 | 6.1 | Hito: Entrega Final — Remodelación Casa Mendoza 1.1 | milestone | 0d | 2026-12-31 | 2026-12-31 | 14, 15 |  |

Notes:
- 1: Capítulo 1 — Remodelación Casa Mendoza
- 2: Item 6.1 Presupuesto / Cubierta general para proteger frentes interiores
- 3: Item 1.1 Presupuesto / Subdivisiones y cerramientos
- 4: Item 1.2 Presupuesto / Revoco en habitaciones, sala y cocina
- 5: Capítulo 2 — Remodelación Casa Mendoza
- 6: Item 2.1 Presupuesto / Por habitaciones, sala, cocina y baño 1
- 7: Item 2.2 Presupuesto / Enchape de pisos y baño 1
- 8: Capítulo 3 — Remodelación Casa Mendoza
- 9: Item 3.1 Presupuesto / Todas las habitaciones, sala, cocina y baño 1
- 10: Item 3.2 Presupuesto / 10 rollos 7.62x1.22m encima de cielo raso en todas las zonas
- 11: Capítulo 4 — Remodelación Casa Mendoza
- 12: Item 4.1 Presupuesto / Pintura final interior y exterior
- 13: Capítulo 5 — Remodelación Casa Mendoza
- 14: Item 5.2 Presupuesto / Habitaciones, sala y cocina
- 15: Item 5.1 Presupuesto / Carpintería de puertas y chapas
- 16: Capítulo 6 — Remodelación Casa Mendoza
- 17: Entrega técnica final y cierre de bitácora
